# Implementación de los sistemas Easy Retail y Contpaq i

Schedule from GanttProject, 2016-08-28 to 2017-06-30.
Gas Campanita SA de CV
Holidays every year on 01-01, 05-01, 09-16, 12-12, 12-25

## Calendars

- Project calendar: Mon-Sun working. Exceptions (off unless hours are given): 2016-11-21 (Revolution Day).

## Schedule

| ID | WBS | Task | Duration | Start | Finish | Complete |
| --- | --- | --- | --- | --- | --- | --- |
| 1 | 1 | Implementación base de sistema administrativo | 4d | 2016-09-06 | 2016-09-09 | 100% |
| 2 | 2 | Capacitación a usuarios | 4d | 2016-09-12 | 2016-09-15 | 100% |
| 3 | 3 | Desarrollos de interfaces para bases de datos de Contpaqi Contabilidad | 30d | 2016-08-28 | 2016-09-27 | 100% |
| 4 | 4 | Implementación de JD entre ERA - Contabilidad | 3d | 2016-09-28 | 2016-09-30 | 100% |
| 5 | 5 | Desarrollos de interfaces para bases de datos de Contpaqi Bancos | 30d | 2016-08-28 | 2016-09-27 | 100% |
| 6 | 6 | Implementación de JD entre ERA - Bancos | 3d | 2016-09-28 | 2016-09-30 | 100% |
| 7 | 7 | **Primera Etapa de desarrollo personalizado para base de Easy Retail Admin** | 132d | 2016-09-05 | 2017-01-19 | 100% |
| 8 | 7.1 | Que aparezca el logo de la empresa en la compra. | 1d | 2016-09-05 | 2016-09-05 | 100% |
| 9 | 7.2 | Activos seleccionados por partida en los documentos (Compras, Ventas, Entradas y salidas de inventario). | 11d | 2016-09-12 | 2016-09-23 | 100% |
| 10 | 7.3 | Filtros en reporte de Clientes y Activos por serie. | 22d | 2016-09-12 | 2016-10-04 | 100% |
| 11 | 7.4 | Cuenta contable asignable por activo y por partida, que se muestre el catálogo de cuentas en compras y ventas. | 22d | 2016-09-12 | 2016-10-04 | 100% |
| 12 | 7.5 | Permitir aplicar un pago por concepto a varios documentos. | 1d | 2016-09-13 | 2016-09-13 | 100% |
| 13 | 7.6 | Permitir aplicar varios impuestos y retenciones por partida. | 15d | 2016-09-12 | 2016-09-27 | 100% |
| 14 | 7.7 | Reporte de CXC y CXP por folio de banco. | 22d | 2016-09-12 | 2016-10-04 | 100% |
| 15 | 7.8 | Permisos en CXC y CXP por usuario (visualizar, abonar) | 22d | 2016-09-12 | 2016-10-04 | 100% |
| 16 | 7.9 | Personalización en la frecuencia de las pólizas en el JD de ERA-CCON. | 15d | 2016-09-12 | 2016-09-27 | 100% |
| 17 | 7.10 | Importación de ventas diarias de Excel a ERA | 15d | 2016-09-12 | 2016-09-27 | 100% |
| 18 | 7.11 | Desarrollo para el manejo de 4 decimales en cantidades, totales, precio y reportes | 63d | 2016-09-12 | 2016-11-14 | 100% |
| 19 | 7.12 | Diseño de ordenes de compra, incluir logo para distinguir de qué empresa son | 3d | 2016-09-12 | 2016-09-14 | 100% |
| 20 | 7.13 | En la impresión de la compra, poner cuenta y activo al que se asignó | 3d | 2016-09-14 | 2016-09-17 | 100% |
| 21 | 7.14 | Apartado de pagos de nota, aplicar el filtro para que se puedan visualizar solo los que se necesitan pagar | 2d | 2016-09-15 | 2016-09-17 | 100% |
| 22 | 7.15 | Permitir aplicar impuestos y retenciones porcentual o por un factor. | 15d | 2016-10-17 | 2016-10-31 | 100% |
| 23 | 7.16 | Crear un reporte de pagos para CXC donde muestre los pagos realizados por cada documento, filtrado por los mismo que CXC excepto estado y folio banco (Usar tablas documentos_pagos y movimientos_pagos) | 3d | 2016-09-19 | 2016-09-21 | 100% |
| 24 | 7.17 | diseño de reportes, se debe de mostrar el encabezado en todas las paginas | 3d | 2016-10-03 | 2016-10-05 | 100% |
| 25 | 7.18 | Agregar los metodos de pago autorizados por el anexo 24 del SAT | 1d | 2016-10-04 | 2016-10-04 | 100% |
| 26 | 7.19 | Agregar fecha y hora de creación a los reportes. | 3d | 2016-10-10 | 2016-10-12 | 100% |
| 27 | 7.20 | Agregar el campo de observaciones al PDF de las notas de crédito | 3d | 2016-10-13 | 2016-10-15 | 100% |
| 28 | 7.21 | En la ventana de pagos generar una relación entre el documento y sus pagos | 5d | 2016-10-17 | 2016-10-21 | 100% |
| 29 | 7.22 | Diseñar una ventana de tickets facturados. | 5d | 2016-10-24 | 2016-10-28 | 100% |
| 30 | 7.23 | Que al momento de hacer una factura de crédito seleccionando ticket, te pueda permitir poner observaciones en la factura, ya que actualmente no lo permite. | 5d | 2016-10-31 | 2016-11-04 | 100% |
| 31 | 7.24 | Los totales en el pdf de la factura no cuentan con espacio suficiente por lo que no se ven las cantidades, hay que rediseñar | 2d | 2016-11-09 | 2016-11-10 | 100% |
| 32 | 7.25 | Eliminar la opción de Catálogo de Pagos Módulos>Ventas>Tipos de Pago | 3d | 2016-11-11 | 2016-11-13 | 100% |
| 33 | 7.26 | habiliar la generación del pdf de la factura cuando se presione el boton de Timbrar. | 2d | 2016-11-13 | 2016-11-14 | 100% |
| 34 | 7.27 | Aumentar el paginado de ventas a 100 para que se puedan facturar un rango más amplio de tickets. | 3d | 2016-11-14 | 2016-11-16 | 100% |
| 35 | 7.28 | Enviar al pdf de la factura la descripción del método de pago y el código al xml | 2d | 2016-11-17 | 2016-11-18 | 100% |
| 36 | 7.29 | En el reporte de ventas incrementar el espacio para mostrar los totales en el resumen del reporte ya que no se ve la cantidad cuando es muy grande (millones) | 4d | 2016-11-22 | 2016-11-25 | 100% |
| 37 | 7.30 | Error numero de columnas no coincide con el numero de valores a insertar | 1d | 2016-11-28 | 2016-11-28 | 100% |
| 38 | 7.31 | Mostrar en el PDF de la factura el descuento. (PDF 1,2,3,5 decimales) | 3d | 2016-11-29 | 2016-12-01 | 100% |
| 39 | 7.32 | Agregar en el xml en el domicilio del Receptor el Codigo Postal | 5d | 2016-12-05 | 2016-12-09 | 100% |
| 40 | 7.33 | Que al momento de obtener un reporte de encabezados o en un reporte nuevo, nos diga los ticket que ya están facturados y con qué número y que se pueda obtener detallado o totalizado por documento | 2d | 2016-12-09 | 2016-12-10 | 100% |
| 41 | 7.34 | Que al momento de seleccionar ticket para facturar te dé un total previo para validar con lo que se quiere facturar. | 4d | 2016-12-13 | 2016-12-16 | 100% |
| 42 | 7.35 | Mostrar en el PDF de la factura el descuento. (PDF 0,4,6 decimales) | 23d | 2016-12-19 | 2017-01-12 | 100% |
| 43 | 7.36 | Que al momento de obtener un reporte de encabezados o en un reporte nuevo, nos diga los ticket que ya están facturados y con qué número y que se pueda obtener detallado o totalizado por documento | 4d | 2017-01-16 | 2017-01-19 | 100% |

| ID | WBS | Task | Duration | Start | Finish | Complete | Constraint |
| --- | --- | --- | --- | --- | --- | --- | --- |
| 44 | 8 | **Segunda Etapa de desarrollo personalizado para base Easy Retail Admin** | 162d | 2017-01-19 | 2017-06-30 | 62% | start no earlier than 2016-08-04 |
| 45 | 8.1 | Habilitar en el reporte de antigüedad de saldos el filtro por serie-documento | 3d | 2017-01-19 | 2017-01-21 | 100% |  |
| 46 | 8.2 | Póliza de Pago de Proveedores, desarrollo para buen funcionamiento | 60d | 2017-01-23 | 2017-03-23 | 100% |  |
| 47 | 8.3 | Se puede borrar un cliente cuando tiene documentos creados en el JD, corregir | 4d | 2017-01-20 | 2017-01-23 | 100% |  |
| 48 | 8.4 | En compras cuando se genere el JD, nos indique en la poliza el número de proveedor ademas de el número de la orden de compra | 3d | 2017-01-24 | 2017-01-26 | 100% |  |
| 49 | 8.5 | validar que al agregar mas de dos partidas no se calcule mal el importe | 1d | 2017-01-27 | 2017-01-27 |  |  |
| 50 | 8.6 | Agregar configuración para hacer obligatorio el campo de Activo y Cuenta Contable en los Pagos | 2d | 2017-01-30 | 2017-01-31 | 100% |  |
| 51 | 8.7 | Agregar el "Nombre de cliente", ademas del codigo, en los reportes de ventas | 10d | 2017-02-01 | 2017-02-10 | 100% |  |
| 52 | 8.8 | Revisar que al generar las pólizas no se generen con cuenta de cuadre | 1d | 2017-02-13 | 2017-02-13 | 100% |  |
| 53 | 8.9 | Revisar que se calcule correctamente el IVA cuando se facturan tickets | 1d | 2017-02-13 | 2017-02-13 | 100% |  |
| 54 | 8.10 | Crear un Query para que los tickets cancelados con anterioridad no se dupliquen | 39d | 2017-02-14 | 2017-03-24 | 100% |  |
| 55 | 8.11 | Pruebas, crear un query para corregir las cxc que tienen doble registro en la tabla de cxc | 1d | 2017-02-20 | 2017-02-20 | 100% |  |
| 56 | 8.12 | se necesita un concepto de descuento esto para identificar los pagos de cartera | 1d | 2017-02-15 | 2017-02-15 | 100% |  |
| 57 | 8.13 | validar, al momento de capturar una compra respete la fecha que se captura en el registro, ocea la fecha de la factura | 1d | 2017-03-29 | 2017-03-29 | 100% |  |
| 58 | 8.14 | validación, al agregar productos de un documento de compra a un factura que si baje los importes correctos, | 1d | 2017-04-05 | 2017-04-05 | 100% |  |
| 59 | 8.15 | Poner en la factura la imagen de NOM | 5d | 2017-03-27 | 2017-03-31 | 100% |  |
| 60 | 8.16 | Detallar el reporte de traspasos con lotes y pedimentos | 2d | 2017-04-24 | 2017-04-25 |  |  |
| 61 | 8.17 | Detallar el reporte de compras y ventas por mes | 2d | 2017-04-25 | 2017-04-26 |  |  |
| 62 | 8.18 | Detallar el reporte de ventas por clientes | 2d | 2017-04-27 | 2017-04-28 |  |  |
| 63 | 8.19 | Manejo correcto de kits de productos, desarrollo completo del módulo | 3d | 2017-05-02 | 2017-05-04 |  |  |
| 64 | 8.20 | Agregar a reporte el dato de pedimento y serie en base a la configuración del producto | 2d | 2017-04-04 | 2017-04-05 |  |  |
| 65 | 8.21 | Revisión y corrección de los métodos de costeo | 10d | 2017-05-08 | 2017-05-17 |  |  |
| 66 | 8.22 | Que el usuario tenga una restricción para poder únicamente crear documentos con la serie que se le asigno. | 1d | 2017-05-18 | 2017-05-18 |  |  |
| 67 | 8.23 | Habilitar el manejo de pistolas detectoras de código para las entradas, salidas, y traspasos, La funcion espeficifa es que no lo quiere hacer por producto, se hara una nueva ventana para que se carguen los productos en automatico | 13d | 2017-05-19 | 2017-05-31 |  |  |
| 68 | 8.24 | Desarrollo de manejo de máximos y mínimos por almacén, que se mande correo cuando quede una cantidad de prodcutos | 5d | 2017-05-22 | 2017-05-26 |  |  |
| 69 | 8.25 | Modificación de Join Data para recibir la póliza del costo de lo vendido | 9d | 2017-06-01 | 2017-06-09 |  |  |
| 70 | 8.26 | Desarrollo de complemento de pago CFDI 3.3 por actualización fiscal del anexo 20 | 16d | 2017-06-01 | 2017-06-16 |  |  |
| 71 | 8.27 | Reporte de estado de resultados | 12d | 2017-06-19 | 2017-06-30 |  |  |
