# Implementación de los sistemas Easy Retail y Contpaq i

Schedule from GanttProject, 2016-09-05 to 2017-04-19.
Gas Campanita SA de CV
Holidays every year on 01-01, 05-01, 09-16, 12-12, 12-25

## Calendars

- Project calendar: Mon-Sun working. Exceptions (off unless hours are given): 2016-11-21 (Revolution Day).

## Schedule

| ID | WBS | Task | Duration | Start | Finish | Complete |
| --- | --- | --- | --- | --- | --- | --- |
| 1 | 1 | Implementación de 5 empresas | 4d | 2016-09-06 | 2016-09-09 |  |
| 2 | 2 | Capacitación a usuarios | 4d | 2016-09-12 | 2016-09-15 |  |
| 3 | 3 | **Primera Etapa de desarrollo personalizado para base de Easy Retail Admin** | 132d | 2016-09-05 | 2017-01-19 | 99% |
| 4 | 3.1 | Activos seleccionados por partida en los documentos (Compras, Ventas, Entradas y salidas de inventario). | 11d | 2016-09-12 | 2016-09-23 | 100% |
| 5 | 3.2 | Filtros en reporte de Clientes y Activos por serie. | 22d | 2016-09-12 | 2016-10-04 | 100% |
| 6 | 3.3 | Cuenta contable asignable por activo y por partida, que se muestre el catálogo de cuentas en compras y ventas. | 22d | 2016-09-12 | 2016-10-04 | 100% |
| 7 | 3.4 | Permitir aplicar un pago por concepto a varios documentos. | 1d | 2016-09-13 | 2016-09-13 | 100% |
| 8 | 3.5 | Permitir aplicar varios impuestos y retenciones por partida. | 15d | 2016-09-12 | 2016-09-27 | 100% |
| 9 | 3.6 | Permitir aplicar impuestos y retenciones porcentual o por un factor. | 15d | 2016-09-12 | 2016-09-27 | 100% |
| 10 | 3.7 | Reporte de CXC y CXP por folio de banco. | 22d | 2016-09-12 | 2016-10-04 | 100% |
| 11 | 3.8 | Permisos en CXC y CXP por usuario (visualizar, abonar) | 22d | 2016-09-12 | 2016-10-04 | 100% |
| 12 | 3.9 | Personalización en la frecuencia de las pólizas en el JD de ERA-CCON. | 15d | 2016-09-12 | 2016-09-27 | 100% |
| 13 | 3.10 | Importación de ventas diarias de Excel a ERA | 15d | 2016-09-12 | 2016-09-27 | 100% |
| 14 | 3.11 | Desarrollo para el manejo de 4 decimales en cantidades, totales, precio y reportes | 63d | 2016-09-12 | 2016-11-14 | 100% |
| 15 | 3.12 | Diseño de ordenes de compra, incluir logo para distinguir de qué empresa son | 3d | 2016-09-12 | 2016-09-14 | 100% |
| 16 | 3.13 | En la impresión de la compra, poner cuenta y activo al que se asignó | 3d | 2016-09-14 | 2016-09-17 | 100% |
| 17 | 3.14 | Apartado de pagos de nota, aplicar el filtro para que se puedan visualizar solo los que se necesitan pagar | 2d | 2016-09-15 | 2016-09-17 | 100% |
| 18 | 3.15 | Crear un reporte de pagos para CXC donde muestre los pagos realizados por cada documento, filtrado por los mismo que CXC excepto estado y folio banco (Usar tablas documentos_pagos y movimientos_pagos) | 3d | 2016-09-19 | 2016-09-21 | 100% |
| 19 | 3.16 | diseño de reportes, se debe de mostrar el encabezado en todas las paginas | 3d | 2016-10-03 | 2016-10-05 | 100% |
| 20 | 3.17 | Agregar los metodos de pago autorizados por el anexo 24 del SAT | 1d | 2016-10-04 | 2016-10-04 | 100% |
| 21 | 3.18 | Agregar fecha y hora de creación a los reportes. | 3d | 2016-10-10 | 2016-10-12 | 100% |
| 22 | 3.19 | Agregar el campo de observaciones al PDF de las notas de crédito | 3d | 2016-10-13 | 2016-10-15 | 100% |
| 23 | 3.20 | En la ventana de pagos generar una relación entre el documento y sus pagos | 5d | 2016-10-17 | 2016-10-21 | 100% |
| 24 | 3.21 | Diseñar una ventana de tickets facturados. | 5d | 2016-10-24 | 2016-10-28 | 100% |
| 25 | 3.22 | Que al momento de hacer una factura de crédito seleccionando ticket, te pueda permitir poner observaciones en la factura, ya que actualmente no lo permite. | 5d | 2016-10-31 | 2016-11-04 | 100% |

| ID | WBS | Task | Duration | Start | Finish | Complete | Constraint |
| --- | --- | --- | --- | --- | --- | --- | --- |
| 26 | 3.23 | **Que aparezca el logo de la empresa en la compra.** | 1d | 2016-09-05 | 2016-09-05 | 100% |  |
| 27 | 3.23.1 | Implementación de base Easy Retail Admin | 1d | 2016-09-05 | 2016-09-05 | 100% |  |
| 28 | 3.24 | Los totales en el pdf de la factura no cuentan con espacio suficiente por lo que no se ven las cantidades, hay que rediseñar | 2d | 2016-11-09 | 2016-11-10 | 100% |  |
| 29 | 3.25 | Eliminar la opción de Catálogo de Pagos Módulos>Ventas>Tipos de Pago | 3d | 2016-11-11 | 2016-11-13 | 100% |  |
| 30 | 3.26 | habiliar la generación del pdf de la factura cuando se presione el boton de Timbrar. | 2d | 2016-11-13 | 2016-11-14 | 100% |  |
| 31 | 3.27 | Aumentar el paginado de ventas a 100 para que se puedan facturar un rango más amplio de tickets. | 3d | 2016-11-14 | 2016-11-16 | 100% |  |
| 32 | 3.28 | Enviar al pdf de la factura la descripción del método de pago y el código al xml | 2d | 2016-11-17 | 2016-11-18 | 100% |  |
| 33 | 3.29 | En el reporte de ventas incrementar el espacio para mostrar los totales en el resumen del reporte ya que no se ve la cantidad cuando es muy grande (millones) | 4d | 2016-11-22 | 2016-11-25 | 100% |  |
| 34 | 3.30 | Error numero de columnas no coincide con el numero de valores a insertar | 1d | 2016-11-28 | 2016-11-28 |  |  |
| 35 | 3.31 | Mostrar en el PDF de la factura el descuento. (PDF 1,2,3,5 decimales) | 3d | 2016-11-29 | 2016-12-01 | 100% |  |
| 36 | 3.32 | Agregar en el xml en el domicilio del Receptor el Codigo Postal | 5d | 2016-12-05 | 2016-12-09 | 100% |  |
| 37 | 3.33 | Que al momento de obtener un reporte de encabezados o en un reporte nuevo, nos diga los ticket que ya están facturados y con qué número y que se pueda obtener detallado o totalizado por documento | 2d | 2016-12-09 | 2016-12-10 | 100% |  |
| 38 | 3.34 | Que al momento de seleccionar ticket para facturar te dé un total previo para validar con lo que se quiere facturar. | 4d | 2016-12-13 | 2016-12-16 | 100% |  |
| 39 | 3.35 | Mostrar en el PDF de la factura el descuento. (PDF 0,4,6 decimales) | 23d | 2016-12-19 | 2017-01-12 | 100% |  |
| 40 | 3.36 | Que al momento de obtener un reporte de encabezados o en un reporte nuevo, nos diga los ticket que ya están facturados y con qué número y que se pueda obtener detallado o totalizado por documento | 4d | 2017-01-16 | 2017-01-19 | 100% |  |
| 41 | 4 | Desarrollos de interfaces para bases de datos de Contpaqi Contabilidad | 28d | 2016-11-07 | 2016-12-05 | 100% |  |
| 42 | 5 | Implementación de JD entre ERA - Contabilidad | 4d | 2016-12-06 | 2016-12-09 | 100% |  |
| 43 | 6 | Desarrollos de interfaces para bases de datos de Contpaqi Bancos | 26d | 2016-12-13 | 2017-01-09 |  |  |
| 44 | 7 | Implementación de JD entre ERA - Bancos | 7d | 2017-01-10 | 2017-01-16 |  |  |
| 45 | 8 | **Segunda Etapa de desarrollo personalizado para base Easy Retail Admin** | 91d | 2017-01-19 | 2017-04-19 | 38% | start no earlier than 2016-08-04 |
| 46 | 8.1 | Habilitar en el reporte de antigüedad de saldos el filtro por serie-documento | 3d | 2017-01-19 | 2017-01-21 | 100% |  |
| 47 | 8.2 | En compras cuando se genere el JD, nos indique en la poliza el número de proveedor ademas de el número de la orden de compra | 3d | 2017-01-24 | 2017-01-26 | 100% |  |
| 48 | 8.3 | Agregar configuración para hacer obligatorio el campo de Activo y Cuenta Contable en los Pagos | 2d | 2017-01-30 | 2017-01-31 | 100% |  |
| 49 | 8.4 | Agregar el "Nombre de cliente", ademas del codigo, en los reportes de ventas | 10d | 2017-02-01 | 2017-02-10 | 50% |  |
| 50 | 8.5 | Revisar que al generar las pólizas no se generen con cuenta de cuadre | 1d | 2017-02-13 | 2017-02-13 |  |  |
| 51 | 8.6 | Revisar que se calcule correctamente el IVA cuando se facturan tickets | 1d | 2017-02-13 | 2017-02-13 |  |  |
| 52 | 8.7 | Crear un Query para que los tickets cancelados con anterioridad no se dupliquen | 1d | 2017-02-14 | 2017-02-14 |  |  |
| 53 | 8.8 | Reportes de antigüedad de saldos, debe filtrar por fechas para que permita ver el historial | 1d | 2017-02-15 | 2017-02-15 |  |  |
| 54 | 8.9 | Pruebas, crear un query para corregir las cxc que tienen doble registro en la tabla de cxc | 1d | 2017-02-20 | 2017-02-20 |  |  |
| 55 | 8.10 | se necesita un concepto de descuento esto para identificar los pagos de cartera | 1d | 2017-03-20 | 2017-03-20 |  |  |
| 56 | 8.11 | validar que al agregar mas de dos partidas no se calcule mal el importe | 1d | 2017-03-27 | 2017-03-27 |  |  |
| 57 | 8.12 | validar, al momento de capturar una compra respete la fecha que se captura en el registro, ocea la fecha de la factura1 | 1d | 2017-03-29 | 2017-03-29 |  |  |
| 58 | 8.13 | Crear mas de un asiento contable por serie para que permita la creación de una segunda poliza por evento, | 1d | 2017-04-03 | 2017-04-03 |  |  |
| 59 | 8.14 | validación, al agregar productos de un documento de compra a un factura que si baje los importes correctos, | 1d | 2017-04-05 | 2017-04-05 |  |  |
| 60 | 8.15 | Envio de correos al hacer las facturas de los tickets | 3d | 2017-04-10 | 2017-04-12 |  |  |
| 61 | 8.16 | el botón de timbrado debe hacer su función | 3d | 2017-04-17 | 2017-04-19 |  |  |
