# Implementación de los sistemas Easy Retail y Contpaq i

Schedule from GanttProject, 2015-11-27 to 2016-08-19.
Gas Campanita SA de CV
Holidays every year on 01-01, 05-01, 09-16, 12-12, 12-25

## Calendars

- Project calendar: Mon-Sun working. Exceptions (off unless hours are given): 2016-02-01 (Constitution Day), 2016-03-14 (Birthday of Benito Juárez), 2016-03-24 (Maundy Thursday), 2016-08-01 (Good Friday).

## Schedule

| ID | WBS | Task | Duration | Start | Finish | Complete |
| --- | --- | --- | --- | --- | --- | --- |
| 1 | 1 | Desarrollos de Join Data | 20d | 2015-11-27 | 2015-12-17 | 100% |
| 2 | 2 | Descarga de los sistemas Contpaq i | 1d | 2015-11-30 | 2015-11-30 | 100% |
| 3 | 3 | Instalación Contpaq i Contabilidad | 5d | 2015-12-08 | 2015-12-13 | 100% |
| 4 | 4 | Instalación Contpaq i Bancos | 5d | 2015-12-08 | 2015-12-13 | 100% |
| 5 | 5 | Instalación Contpaq i Nominas | 5d | 2015-12-08 | 2015-12-13 | 100% |
| 6 | 6 | Instalación Contpaq i XML en linea | 5d | 2015-12-08 | 2015-12-13 | 100% |
| 7 | 7 | Instalación Easy Retail Admin | 1d | 2015-12-09 | 2015-12-09 | 100% |
| 8 | 8 | Activación de sistemas de Contpaq i | 1d | 2015-12-16 | 2015-12-16 | 100% |
| 9 | 9 | Carga de la información de Contpaq i Nomina | 17d | 2015-12-17 | 2016-01-04 | 100% |
| 10 | 10 | Capacitación Presencial Contabilidad | 1d | 2015-12-18 | 2015-12-18 | 100% |
| 11 | 11 | Capacitación Presencial Bancos | 1d | 2015-12-18 | 2015-12-18 | 100% |
| 12 | 12 | Capacitación Presencial Nomina | 1d | 2015-12-19 | 2015-12-19 | 100% |
| 13 | 13 | Capacitación Presencial XML en linea | 1d | 2015-12-19 | 2015-12-19 | 100% |
| 14 | 14 | Capacitación Presencial Easy Retail Admin | 3d | 2015-12-21 | 2015-12-23 | 100% |
| 15 | 15 | Implementación de JD entre ERA - Contabilidad | 1d | 2015-12-07 | 2015-12-07 | 100% |
| 16 | 16 | Implementación de JD entre ERA - Bancos | 1d | 2015-12-07 | 2015-12-07 | 100% |
| 17 | 17 | **Desarrollo personalizado ERA** | 22d | 2016-01-04 | 2016-01-25 | 100% |
| 18 | 17.1 | Activos seleccionados por partida en los documentos (Compras, Ventas, Entradas y salidas de inventario). | 15d | 2016-01-04 | 2016-01-18 | 100% |
| 19 | 17.2 | Filtros en reporte de Clientes y Activos por serie. | 22d | 2016-01-04 | 2016-01-25 | 100% |
| 20 | 17.3 | Cuenta contable asignable por activo y por partida, que se muestre el catálogo de cuentas en compras y ventas. | 22d | 2016-01-04 | 2016-01-25 | 100% |
| 21 | 17.4 | Permitir aplicar un pago por concepto a varios documentos. | 1d | 2016-01-04 | 2016-01-04 | 100% |
| 22 | 17.5 | Permitir aplicar varios impuestos y retenciones por partida. | 15d | 2016-01-04 | 2016-01-18 | 100% |
| 23 | 17.6 | Permitir aplicar impuestos y retenciones porcentual o por un factor. | 15d | 2016-01-04 | 2016-01-18 | 100% |
| 24 | 17.7 | Reporte de CXC y CXP por folio de banco. | 22d | 2016-01-04 | 2016-01-25 | 100% |
| 25 | 17.8 | Permisos en CXC y CXP por usuario (visualizar, abonar) | 22d | 2016-01-04 | 2016-01-25 | 100% |
| 26 | 17.9 | Personalización en la frecuencia de las pólizas en el JD de ERA-CCON. | 15d | 2016-01-04 | 2016-01-18 | 100% |
| 27 | 17.10 | Importación de ventas diarias de Excel a ERA | 15d | 2016-01-04 | 2016-01-18 | 100% |
| 28 | 18 | Carga de información a Contpaq i Contabilidad | 15d | 2016-01-04 | 2016-01-18 | 100% |
| 29 | 19 | Configuración de Layout para dispersión de nomina | 4d | 2016-01-10 | 2016-01-13 | 100% |
| 30 | 20 | Interfaz CNOM -> CCON | 8d | 2016-02-12 | 2016-02-19 | 100% |
| 31 | 21 | Desarrollo e implementación para 4 decimales en ERA | 63d | 2016-04-04 | 2016-06-06 | 100% |
| 32 | 22 | Falta poner el logo en las órdenes de compra para distinguir de qué empresa son | 3d | 2016-05-02 | 2016-05-04 | 100% |
| 33 | 23 | En la impresión de la compra, poner cuenta y activo al que se asignó | 3d | 2016-05-02 | 2016-05-04 | 100% |
| 34 | 24 | En la parte de pagos de nota, para revisar los abonos pone todos y no los del cliente que se requiere pagar. | 2d | 2016-05-03 | 2016-05-04 | 100% |
| 35 | 25 | Crear un reporte de pagos para CXC donde muestre los pagos realizados por cada documento, filtrado por los mismo que CXC excepto estado y folio banco (Usar tablas documentos_pagos y movimientos_pagos) | 3d | 2016-05-03 | 2016-05-05 | 100% |
| 36 | 26 | En los reportes solo muestra el encabezado en la primera página. | 3d | 2016-05-16 | 2016-05-18 | 100% |
| 37 | 27 | Corrección en la forma de pago PAGO EN UNA SOLA EXHIBICIÓN - Que sea solo en mayúsculas - Sin acentos | 1d | 2016-05-19 | 2016-05-19 | 100% |
| 38 | 28 | Agregar fecha y hora de creación a los reportes. | 3d | 2016-05-21 | 2016-05-23 | 100% |
| 39 | 29 | Agregar el campo de observaciones al PDF de las notas de crédito | 3d | 2016-05-23 | 2016-05-25 | 100% |
| 40 | 30 | En la ventana de pagos no hay una relación para saber que pago corresponde a un documento. | 5d | 2016-05-23 | 2016-05-27 | 100% |
| 41 | 31 | Ventana de tickets facturados. | 5d | 2016-05-23 | 2016-05-27 | 100% |
| 42 | 32 | Que aparezca el logo de la empresa en la compra. | 3d | 2016-06-04 | 2016-06-06 | 100% |
| 43 | 33 | Que al momento de hacer una factura de crédito seleccionando ticket, te pueda permitir poner observaciones en la factura, ya que actualmente no lo permite. | 5d | 2016-06-02 | 2016-06-06 | 100% |
| 44 | 34 | Integrar a la versión el nuevo catalogo de metodoPago | 11d | 2016-05-30 | 2016-06-09 | 100% |
| 45 | 35 | Los totales en el pdf de la factura no cuentan con espacio suficiente por lo que no se ven las cantidades. | 2d | 2016-06-13 | 2016-06-14 | 100% |
| 46 | 36 | No está generando el pdf de la factura cuando le da el boton de timbrar. | 2d | 2016-06-15 | 2016-06-16 | 100% |
| 47 | 37 | Eliminar la opción de Catálogo de Pagos Módulos>Ventas>Tipos de Pago | 3d | 2016-06-14 | 2016-06-16 | 100% |
| 48 | 38 | Aumentar el paginado de ventas a 100 para que se puedan facturar un rango más amplio de tickets. | 3d | 2016-06-27 | 2016-06-29 | 100% |
| 49 | 39 | Enviar al pdf de la factura la descripción del método de pago y el código al xml | 2d | 2016-06-28 | 2016-06-29 | 100% |
| 50 | 40 | En el reporte de ventas incrementar el espacio para mostrar los totales en el resumen del reporte ya que no se ve la cantidad cuando es muy grande (millones) | 4d | 2016-08-02 | 2016-08-05 | 100% |
| 51 | 41 | Que al momento de seleccionar ticket para facturar te dé un total previo para validar con lo que se quiere facturar. | 4d | 2016-08-02 | 2016-08-05 | 100% |
| 52 | 42 | Mostrar en el PDF de la factura el descuento. (PDF 0,4,6 decimales) | 23d | 2016-07-01 | 2016-07-23 | 100% |
| 53 | 43 | Captura de la información | 1d | 2016-07-26 | 2016-07-26 | 100% |
| 54 | 44 | Mostrar en el PDF de la factura el descuento. (PDF 1,2,3,5 decimales) | 3d | 2016-07-24 | 2016-07-26 | 100% |
| 55 | 45 | Agregar en el xml en el domicilio del Receptor el Codigo Postal | 5d | 2016-07-22 | 2016-07-26 | 100% |
| 56 | 46 | Que al momento de obtener un reporte de encabezados o en un reporte nuevo, nos diga los ticket que ya están facturados y con qué número y que se pueda obtener detallado o totalizado por documento | 2d | 2016-07-27 | 2016-07-28 | 100% |
| 57 | 47 | Que al momento de obtener un reporte de encabezados o en un reporte nuevo, nos diga los ticket que ya están facturados y con qué número y que se pueda obtener detallado o totalizado por documento | 4d | 2016-08-02 | 2016-08-05 | 100% |

| ID | WBS | Task | Duration | Start | Finish | Complete | Constraint |
| --- | --- | --- | --- | --- | --- | --- | --- |
| 58 | 48 | **Desarrollo personalizado ERA** | 16d | 2016-08-04 | 2016-08-19 | 72% | start no earlier than 2016-08-04 |
| 59 | 48.1 | Habilitar en el reporte de antigüedad de saldos el filtro por serie-documento | 3d | 2016-08-08 | 2016-08-10 | 100% |  |
| 60 | 48.2 | En compras cuando se genere el JD, nos indique en la poliza el número de proveedor ademas de el número de la orden de compra | 3d | 2016-08-13 | 2016-08-15 | 100% |  |
| 61 | 48.3 | Agregar configuración para hacer obligatorio el campo de Activo y Cuenta Contable en los Pagos | 2d | 2016-08-04 | 2016-08-05 | 100% |  |
| 62 | 48.4 | Agregar el "Nombre de cliente", ademas del codigo, en los reportes de ventas | 10d | 2016-08-10 | 2016-08-19 | 50% |  |
